# 资源

Schedule from MS Project, 2008-10-13 to 2016-03-01.
HED

## Calendars

- 标准: Mon-Fri 08:00-12:00, 13:00-17:00; Sat-Sun off. Exceptions (off unless hours are given): 2013-01-29 to 2013-01-30, 2013-02-08, 2013-02-11 to 2013-02-15, 2013-04-05, 2013-06-30 08:00-12:00, 13:00-17:00, 2014-05-01 to 2014-05-03, 2014-05-04 08:00-12:00, 13:00-17:00, 2014-09-28 08:00-12:00, 13:00-17:00, 2014-10-01 to 2014-10-07, 2014-10-11 08:00-12:00, 13:00-17:00, 2015-02-16 to 2015-02-27 (春节放假).

## Resources

| Resource |
| --- |
| 王义锋 |
| 李云志 |
| 佘颂 |
| 窦成 |
| 李英才 |
| 葛学元 |
| 王磊 |
| 嵌入式软件B |
| 软件B |
| 待招硬件 |
| 待招软件B |
| 刘汝涛 |
| 广州 |
| 外协 |
| 王亮 |
| 83 |
| 91 |

## Schedule

| ID | WBS | Task | Type | Duration | Start | Finish | Predecessors | Total slack | Free slack | Constraint | Resources | Work | Text1 | Text2 |
| --- | --- | --- | --- | --- | --- | --- | --- | --- | --- | --- | --- | --- | --- | --- |
| 1 | 1 | **VANET** |  | 1905d? | 2008-10-13 | 2016-03-01 |  | 0d |  |  |  | 14088h |  |  |
| 2 | 1.1 | **概念阶段** |  | 22d? | 2014-04-01 | 2014-04-30 |  | -43d | 0d |  |  | 1080h |  |  |
| 3 | 1.1.1 | 立项 |  | 1d | 2014-04-01 | 2014-04-01 |  | -43d | 0d | start no earlier than 2014-04-01 |  |  | 《项目任务书》 |  |
| 4 | 1.1.2 | 制定概念阶段WBS计划 |  | 2d | 2014-04-14 | 2014-04-15 | 3 | 476d |  | start no earlier than 2014-04-14 | 王义锋 | 16h | 《VANET_WBS计划》 |  |
| 5 | 1.1.3 | 前期技术调研 |  | 13d? | 2014-04-02 | 2014-04-18 | 3 | -43d | 0d | start no earlier than 2014-04-02 | 窦成; 李云志; 佘颂; 王义锋 | 416h | 《技术调研报告》 |  |
| 6 | 1.1.4 | 物理层技术（Zigbee）摸底测试 |  | 13d? | 2014-04-07 | 2014-04-23 | 3 | 470d |  | finish no earlier than 2014-04-23 | 窦成; 李云志; 佘颂; 王义锋 | 416h | 《测试总结报告》 |  |
| 7 | 1.1.5 | 需求分析与总体技术方案确定 |  | 3d | 2014-04-21 | 2014-04-23 | 5 | -43d | 0d | finish no earlier than 2014-04-23 | 窦成; 李云志; 佘颂; 王义锋 | 96h |  |  |
| 8 | 1.1.6 | 编写原型机设计需求说明书 |  | 2d | 2014-04-24 | 2014-04-25 | 7 | -43d | 0d | start no earlier than 2011-03-03 | 窦成; 李云志; 佘颂; 王义锋 | 64h | 《原型机（CMS）设计需求说明书》 |  |
| 9 | 1.1.7 | 制定原型机研制阶段WBS计划 |  | 1d | 2014-04-28 | 2014-04-28 | 8 | -43d | 0d | start no earlier than 2013-01-28 | 王义锋 | 8h | 《VANET_WBS计划》 |  |
| 10 | 1.1.8 | 设计需求、WBS计划评审与修改 |  | 2d | 2014-04-29 | 2014-04-30 | 8, 9 | -43d | 0d |  | 窦成; 李云志; 佘颂; 王义锋 | 64h |  |  |
| 11 | 1.2 | **原型机（CMS）研制阶段** |  | 81d | 2014-05-04 | 2014-08-22 | 10 | -43d | 0d |  |  | 960h |  |  |
| 12 | 1.2.1 | **CMS-产品总体设计** |  | 11d | 2014-05-04 | 2014-05-16 |  | -43d | 0d |  |  |  |  |  |
| 13 | 1.2.1.1 | 制定产品总体设计方案 |  | 10d | 2014-05-04 | 2014-05-15 | 10 | -43d | 0d | start no earlier than 2011-03-07 |  |  | 《CMS原型机_产品总体设计方案》 |  |
| 14 | 1.2.1.2 | 制定产品测试总体方案 |  | 10d | 2014-05-04 | 2014-05-15 | 10 | -43d | 0d |  |  |  | 《CMS原型机_测试总体方案》 |  |
| 15 | 1.2.1.3 | 产品总体设计评审 |  | 1d | 2014-05-16 | 2014-05-16 | 13, 14 | -43d | 0d | start no earlier than 2011-03-09 |  |  |  | 项目组 |
| 16 | 1.2.2 | **CMS-硬件开发** |  | 70d | 2014-05-19 | 2014-08-22 | 15 | -43d | 0d |  |  | 320h |  |  |
| 17 | 1.2.2.1 | **研发样机设计方案** | inactive | 4d | 2014-05-19 | 2014-05-22 |  | -47d | 0d |  |  |  |  |  |
| 18 | 1.2.2.1.1 | 研发样机硬件设计方案 | inactive | 3d | 2014-05-19 | 2014-05-21 |  | -47d | 0d | start no earlier than 2011-03-03 |  |  | 《B1301_硬件设计方案》 |  |
| 19 | 1.2.2.1.2 | 研发样机硬件设计方案评审 | inactive | 1d | 2014-05-22 | 2014-05-22 | 18 | -47d | 0d |  |  |  | 《B1301_硬件设计方案评审报告》 | 项目组 |
| 20 | 1.2.2.2 | **硬件设计实现** |  | 70d | 2014-05-19 | 2014-08-22 |  | -43d | 0d |  |  | 320h |  |  |
| 21 | 1.2.2.2.1 | 原理图设计实现 |  | 2d | 2014-05-19 | 2014-05-20 | 19 | -43d | 0d | start no earlier than 2011-03-01 |  |  |  |  |
| 22 | 1.2.2.2.2 | 硬件PCB设计实现 |  | 8d | 2014-05-21 | 2014-05-30 | 21 | -43d | 0d | start no earlier than 2013-03-08 |  |  |  |  |
| 23 | 1.2.2.2.3 | 屏蔽罩设计 | milestone | 0d | 2014-05-30 | 2014-05-30 | 22 | -43d | 0d | start no earlier than 2013-03-08 |  |  |  |  |
| 24 | 1.2.2.2.4 | 委托制板与焊接（1） |  | 15d | 2014-06-02 | 2014-06-20 | 23 | -43d | 0d |  |  |  |  |  |
| 25 | 1.2.2.2.5 | NoPA版硬件调试（1) |  | 5d | 2014-06-23 | 2014-06-27 | 24 | -43d | 0d |  |  |  |  |  |
| 26 | 1.2.2.2.6 | PA版硬件调试与性能测试（1） |  | 10d | 2014-06-30 | 2014-07-11 | 25 | -43d | 0d |  | 李英才 | 80h |  |  |
| 27 | 1.2.2.2.7 | 硬件PCB改版设计实现 |  | 5d | 2014-07-14 | 2014-07-18 | 26 | -43d | 0d |  | 李英才 | 40h |  |  |
| 28 | 1.2.2.2.8 | 委托制板与焊接（2） |  | 15d | 2014-07-21 | 2014-08-08 | 27 | -43d | 0d |  | 李英才 | 120h |  |  |
| 29 | 1.2.2.2.9 | 小批量硬件性能测试（2） |  | 10d | 2014-08-11 | 2014-08-22 | 28 | -43d | 0d |  | 李英才 | 80h |  |  |

| ID | WBS | Task | Type | Duration | Start | Finish | Predecessors | Total slack | Free slack | Constraint | Resources | Work | Text1 |
| --- | --- | --- | --- | --- | --- | --- | --- | --- | --- | --- | --- | --- | --- |
| 30 | 1.2.3 | **CMS-软件开发** |  | 60d | 2014-05-19 | 2014-08-08 | 15 | -43d | 0d |  |  | 640h |  |
| 31 | 1.2.3.1 | **固件程序-应用部分** |  | 35d | 2014-05-19 | 2014-07-04 |  | -43d | 0d |  |  |  |  |
| 32 | 1.2.3.1.1 | 固件设计说明书 | milestone, inactive | 0d | 2014-05-16 | 2014-05-16 |  | -43d | 0d | start no earlier than 2011-03-03 |  |  |  |
| 33 | 1.2.3.1.2 | 固件测试用例设计 | milestone, inactive | 0d | 2014-05-16 | 2014-05-16 | 32 | -43d | 0d |  |  |  |  |
| 34 | 1.2.3.1.3 | 软件编码与调试（系统工程搭建） |  | 15d | 2014-05-19 | 2014-06-06 | 33 | -43d | 0d |  |  |  |  |
| 35 | 1.2.3.1.4 | 中间件部分（RCP/GPS/API） |  | 10d | 2014-06-09 | 2014-06-20 | 34 | -43d | 0d |  |  |  |  |
| 36 | 1.2.3.1.5 | 安全应用部分（近距离/手动故障） |  | 5d | 2014-06-23 | 2014-06-27 | 35 | -43d | 0d |  |  |  |  |
| 37 | 1.2.3.1.6 | 系统及驱动部分（按键/LED） |  | 5d | 2014-06-30 | 2014-07-04 | 36 | -43d | 0d |  |  |  |  |
| 38 | 1.2.3.2 | **固件程序-通信部分** |  | 30d | 2014-05-26 | 2014-07-04 | 15 | -23d | 0d |  | 李云志 | 240h |  |
| 39 | 1.2.3.2.1 | 软件编码（第一版） |  | 10d | 2014-05-26 | 2014-06-06 | 15 | -23d | 0d | start no earlier than 2014-05-26 |  |  |  |
| 40 | 1.2.3.2.2 | 测试环境搭建及算法测试 |  | 15d | 2014-06-09 | 2014-06-27 | 39 | -18d | 0d | start no earlier than 2014-05-26 |  |  |  |
| 41 | 1.2.3.2.3 | 移植到系统工程（RTT） |  | 5d | 2014-06-30 | 2014-07-04 | 40 | -18d | 0d |  |  |  |  |
| 42 | 1.2.3.3 | **固件程序联调（基于CMS硬件）** |  | 25d | 2014-07-07 | 2014-08-08 | 39, 25, 37 | -43d | 0d |  | 葛学元; 王磊 | 400h |  |
| 43 | 1.2.3.3.1 | 剩余功能实现与路由算法优化 |  | 25d | 2014-07-07 | 2014-08-08 |  | -43d | 0d |  |  |  |  |
| 44 | 1.2.3.4 | **测试程序开发** |  | 10d | 2014-06-09 | 2014-06-20 |  | -8d | 0d |  |  |  |  |
| 45 | 1.2.3.4.1 | 测试程序设计说明书 | milestone, inactive | 0d | 2014-07-04 | 2014-07-04 | 38 | -18d | 0d | start no earlier than 2011-03-03 |  |  |  |
| 46 | 1.2.3.4.2 | 测试程序软件编码与调试 |  | 10d | 2014-06-09 | 2014-06-20 | 39 | -8d | 0d |  |  |  |  |
| 47 | 1.2.4 | **CMS-集成测试** |  | 10d | 2014-08-11 | 2014-08-22 | 41, 42, 44 | -43d | 0d |  |  |  |  |
| 48 | 1.2.4.1 | 系统测试-功能 |  | 5d | 2014-08-11 | 2014-08-15 | 30 | -43d | 0d |  |  |  |  |
| 49 | 1.2.4.2 | 系统测试-稳定性 |  | 3d | 2014-08-18 | 2014-08-20 | 48 | -41d | 0d |  |  |  |  |
| 50 | 1.2.4.3 | 系统测试-性能 |  | 3d | 2014-08-18 | 2014-08-20 | 20FS-5d, 48 | -43d | 0d |  |  |  |  |
| 51 | 1.2.4.4 | 内部试用（α测试） |  | 2d | 2014-08-21 | 2014-08-22 | 50 | -43d | 0d |  |  |  |  |
| 52 | 1.2.4.5 | 外部试用（β测试） | inactive | 3d | 2014-08-18 | 2014-08-20 | 48 | -41d | 0d |  |  |  |  |
| 53 | 1.2.5 | **(TBD...)CMS-可靠性测试** |  | 15d | 2014-07-14 | 2014-08-01 | 26 | -28d | 0d |  |  |  | 《研发样机可靠性测试报告》 |
| 54 | 1.2.5.1 | 高低温寿命测试 |  | 5d | 2014-07-14 | 2014-07-18 |  | -28d | 0d | finish no earlier than 2009-04-29 |  |  |  |
| 55 | 1.2.5.2 | 高低温存储测试 |  | 5d | 2014-07-21 | 2014-07-25 | 54 | -26d | 0d | finish no earlier than 2009-05-05 |  |  |  |
| 56 | 1.2.5.3 | 温度循环测试 |  | 3d | 2014-07-28 | 2014-07-30 | 55 | -26d | 0d | finish no earlier than 2009-05-05 |  |  |  |
| 57 | 1.2.5.4 | 震动测试 |  | 10d | 2014-07-21 | 2014-08-01 | 54 | -28d | 0d | finish no earlier than 2013-04-03 |  |  |  |

| ID | WBS | Task | Duration | Start | Finish | Predecessors | Total slack | Free slack | Constraint | Resources | Work | Text1 | Text2 |
| --- | --- | --- | --- | --- | --- | --- | --- | --- | --- | --- | --- | --- | --- |
| 58 | 1.2.6 | **(TBD...) CMS-生产制造** | 40d | 2014-05-04 | 2014-06-26 |  | -2d | 0d |  |  |  |  |  |
| 59 | 1.2.6.1 | 生产测试规范设计 | 5d | 2014-05-04 | 2014-05-08 |  | 31d | 0d | start no earlier than 2013-03-15 |  |  | 《TLN13UA06生产测试规范》 |  |
| 60 | 1.2.6.2 | 生产测试规范设计评审 | 2d | 2014-05-09 | 2014-05-12 | 59 | 31d |  | start no earlier than 2013-04-04 |  |  | 《TLN13UA06生产测试规范评审报告》 |  |
| 61 | 1.2.6.3 | 研发样机质量检测 | 1d | 2014-05-04 | 2014-05-04 |  | 37d |  |  |  |  |  |  |
| 62 | 1.2.6.4 | 物料询价、代工厂BOM转化 | 20d | 2014-05-04 | 2014-05-29 |  | -2d | 0d | start no earlier than 2013-02-27 |  |  |  |  |
| 63 | 1.2.6.5 | 生产测试工具制作、屏蔽罩 | 20d | 2014-05-30 | 2014-06-26 | 62 | -2d | 0d |  |  |  |  |  |
| 64 | 1.2.7 | **(TBD...)研发样机定型评审** | 10d | 2014-05-04 | 2014-05-15 |  | 28d |  |  |  |  |  |  |
| 65 | 1.2.7.1 | 研发样机总结 | 6d | 2014-05-04 | 2014-05-09 |  | 28d | 0d | finish no earlier than 2013-04-24 |  |  | 《B1301_研发样机研制总结报告》 | 项目组 |
| 66 | 1.2.7.2 | 研发样机总结评审 | 1d | 2014-05-12 | 2014-05-12 | 65 | 28d | 0d |  |  |  | 《B1301-研发样机研制总结评审报告》 |  |
| 67 | 1.2.7.3 | 研发样机决策评审 | 3d | 2014-05-13 | 2014-05-15 | 66 | 28d |  |  |  |  | 《B1301-研发样机决策评审报告》 | 公司级 |
| 68 | 1.2.7.4 | 研发样机产品包制作 | 3d | 2014-05-13 | 2014-05-15 | 66 | 28d |  |  |  |  |  |  |
| 69 | 1.3 | **系统方案研制阶段** | 187d? | 2014-09-08 | 2015-06-12 | 11 |  |  |  |  | 11984h |  |  |
| 70 | 1.3.1 | 制定WBS计划 | 5d | 2014-09-08 | 2014-09-12 |  | -53d | 0d |  |  |  |  |  |
| 71 | 1.3.2 | 制定产品技术规格 | 5d | 2014-09-15 | 2014-09-19 | 70 | 37d | 0d |  |  |  |  |  |
| 72 | 1.3.3 | 系统总体方案设计 | 10d | 2014-09-22 | 2014-10-09 | 71 | 37d | 0d |  |  |  |  |  |
| 73 | 1.3.4 | **硬件开发** | 369d | 2014-09-12 | 2016-03-01 | 70 | -53d | 0d |  |  | 7632h |  |  |
| 74 | 1.3.4.1 | **V2V模块（方案1：RT3070）** | 227d | 2014-09-15 | 2015-08-14 |  | -53d | 0d |  | 李英才 | 2376h |  |  |
| 75 | 1.3.4.1.1 | RT3070网卡方案验证 | 20d | 2014-09-15 | 2014-10-15 |  | -53d | 0d |  |  |  |  |  |
| 76 | 1.3.4.1.2 | 模块原理图及PCB设计（带MCU） | 15d | 2014-10-16 | 2014-11-05 | 75 | -53d | 0d |  |  |  |  |  |
| 77 | 1.3.4.1.3 | 样品（20块）制板与焊接 | 15d | 2014-11-06 | 2014-11-26 | 76 | -53d | 0d |  |  |  |  |  |
| 78 | 1.3.4.1.4 | 硬件测试 | 20d | 2015-01-19 | 2015-02-13 | 77 | -90d | 0d | finish no earlier than 2015-02-13 |  |  |  |  |
| 79 | 1.3.4.1.5 | 硬件改版 | 15d | 2015-03-02 | 2015-03-20 | 78 | -90d | 0d |  |  |  |  |  |
| 80 | 1.3.4.1.6 | 样品（20块）焊接与测试 | 15d | 2015-03-23 | 2015-04-10 | 79 | -90d | 0d |  |  |  |  |  |
| 81 | 1.3.4.1.7 | 屏蔽罩设计 | 30d | 2015-04-13 | 2015-05-22 | 80 | 15d |  |  | 外协 | 240h |  |  |
| 82 | 1.3.4.1.8 | 小批量（100块）试生产 | 40d | 2015-04-27 | 2015-06-19 | 80, 88 | -100d | 0d |  | 广州 | 320h |  |  |
| 83 | 1.3.4.1.9 | 小批量硬件性能测试与生产改进 | 20d | 2015-06-22 | 2015-07-17 | 82, 105 | -100d | 0d |  |  |  |  |  |
| 84 | 1.3.4.1.10 | 量产测试工装开发 | 20d | 2015-07-20 | 2015-08-14 | 83 | -45d | 0d |  |  |  |  |  |

| ID | WBS | Task | Type | Duration | Start | Finish | Predecessors | Total slack | Free slack | Resources | Work |
| --- | --- | --- | --- | --- | --- | --- | --- | --- | --- | --- | --- |
| 85 | 1.3.4.2 | **车载终端（基本型）** |  | 262d | 2015-03-02 | 2016-03-01 |  |  |  | 刘汝涛 | 2856h |
| 86 | 1.3.4.2.1 | 原理图和PCB设计 |  | 15d | 2015-03-02 | 2015-03-20 |  | -100d | 0d |  |  |
| 87 | 1.3.4.2.2 | 样品（20块）制板与焊接 |  | 15d | 2015-03-23 | 2015-04-10 | 86 | -100d | 0d | 外协 | 120h |
| 88 | 1.3.4.2.3 | 硬件测试与改版 |  | 10d | 2015-04-13 | 2015-04-24 | 87 | -100d | 0d |  |  |
| 89 | 1.3.4.2.4 | 天线设计 |  | 40d | 2015-04-27 | 2015-06-19 | 88 | 182d |  | 外协 | 320h |
| 90 | 1.3.4.2.5 | 小批量（100块）试生产 |  | 40d | 2015-04-27 | 2015-06-19 | 88 | -25d | 0d | 广州 | 320h |
| 91 | 1.3.4.2.6 | 小批量硬件性能测试与生产改进 |  | 20d | 2015-06-22 | 2015-07-17 | 90 | -25d | 0d |  |  |
| 92 | 1.3.4.2.7 | 量产测试工装开发 |  | 20d | 2015-07-20 | 2015-08-14 | 91 | 142d |  |  |  |
| 93 | 1.3.4.3 | **V2V模块（方案2：NL6621）** |  | 55d | 2015-03-23 | 2015-06-05 |  | -40d | 0d | 刘汝涛 | 600h |
| 94 | 1.3.4.3.1 | 模块原理图及PCB设计 |  | 15d | 2015-03-23 | 2015-04-10 | 86 | -40d | 0d |  |  |
| 95 | 1.3.4.3.2 | 样品（20块）制板与焊接 |  | 20d | 2015-04-13 | 2015-05-08 | 94 | -40d | 0d | 外协 | 160h |
| 96 | 1.3.4.3.3 | 硬件测试 |  | 20d | 2015-05-11 | 2015-06-05 | 95, 88 | -5d | 0d |  |  |
| 97 | 1.3.4.3.4 | 硬件改版 | inactive | 10d | 2015-06-08 | 2015-06-19 | 96 | -85d | 0d |  |  |
| 98 | 1.3.4.3.5 | 小批量（200块）试生产 | inactive | 40d | 2015-06-22 | 2015-08-14 | 97 | -85d | 0d | 广州 | 320h |
| 99 | 1.3.4.3.6 | 小批量硬件性能测试与生产改进 | inactive | 20d | 2015-08-17 | 2015-09-11 | 98 | -85d | 0d |  |  |
| 100 | 1.3.4.3.7 | 量产测试工装开发 | inactive | 20d | 2015-09-14 | 2015-10-09 | 99 | -85d | 0d |  |  |
| 101 | 1.3.4.4 | **车载终端（增强型）** |  | 95d | 2015-03-23 | 2015-07-31 |  | -90d | 0d | 李英才 | 1640h |
| 102 | 1.3.4.4.1 | 原理图和PCB设计 |  | 20d | 2015-03-23 | 2015-04-17 | 79 | -90d | 0d |  |  |
| 103 | 1.3.4.4.2 | 屏蔽罩设计制作 |  | 40d | 2015-04-20 | 2015-06-12 | 102 | 0d |  | 外协 | 320h |
| 104 | 1.3.4.4.3 | 样品（20块）制板与焊接 |  | 20d | 2015-04-20 | 2015-05-15 | 102 | -90d | 0d | 外协 | 160h |
| 105 | 1.3.4.4.4 | 硬件测试（第一版） |  | 15d | 2015-05-18 | 2015-06-05 | 104 | -90d | 0d |  |  |
| 106 | 1.3.4.4.5 | 天线设计 |  | 20d | 2015-06-22 | 2015-07-17 | 107 | -25d | 0d | 外协 | 160h |
| 107 | 1.3.4.4.6 | 硬件改版 |  | 10d | 2015-06-08 | 2015-06-19 | 105 | -45d | 0d |  |  |
| 108 | 1.3.4.4.7 | 样品（20块）制板与焊接 |  | 20d | 2015-06-22 | 2015-07-17 | 107 | -45d | 0d | 外协 | 160h |
| 109 | 1.3.4.4.8 | 硬件测试（第二版） |  | 10d | 2015-07-20 | 2015-07-31 | 108 | -45d | 0d | 外协 | 80h |
| 110 | 1.3.4.4.9 | 小批量（50块）试生产 | inactive | 40d | 2015-06-08 | 2015-07-31 | 105 | -50d | 0d | 广州 | 320h |
| 111 | 1.3.4.4.10 | 小批量硬件性能测试与生产改进 | inactive | 15d | 2015-08-03 | 2015-08-21 | 110 | -50d | 0d |  |  |

| ID | WBS | Task | Type | Duration | Start | Finish | Predecessors | Total slack | Free slack | Constraint | Resources | Work |
| --- | --- | --- | --- | --- | --- | --- | --- | --- | --- | --- | --- | --- |
| 112 | 1.3.4.5 | **固定路侧终端（原型）** |  | 120d | 2015-04-20 | 2015-10-02 |  | -100d | 0d |  |  | 160h |
| 113 | 1.3.4.5.1 | 硬件方案制定 |  | 15d | 2015-04-20 | 2015-05-08 | 102 | -50d | 0d |  |  |  |
| 114 | 1.3.4.5.2 | 原理图与PCB |  | 20d | 2015-07-20 | 2015-08-14 | 113, 83 | -100d | 0d |  |  |  |
| 115 | 1.3.4.5.3 | 样品制板与焊接 |  | 20d | 2015-08-17 | 2015-09-11 | 114 | -100d | 0d |  | 外协 | 160h |
| 116 | 1.3.4.5.4 | 硬件测试 |  | 15d | 2015-09-14 | 2015-10-02 | 115 | -100d | 0d |  |  |  |
| 117 | 1.3.4.6 | **移动路侧终端（原型）** |  | 0d | 2014-09-12 | 2014-09-12 |  | 182d |  |  |  |  |
| 118 | 1.3.4.6.1 | TBD... | milestone | 0d | 2014-09-12 | 2014-09-12 |  | 182d |  |  |  |  |
| 119 | 1.3.5 | **软件开发** |  | 259d | 2014-10-10 | 2015-10-20 | 72 | 0d |  |  |  | 4352h |
| 120 | 1.3.5.1 | **基本型车载终端固件（RT3070方案）** |  | 136d | 2014-10-10 | 2015-04-30 |  | 11d | 0d |  |  | 1904h |
| 121 | 1.3.5.1.1 | 底层通信部分（USB/MAC） |  | 20d | 2014-10-10 | 2014-11-05 |  | 127d |  |  | 王义锋 | 160h |
| 122 | 1.3.5.1.2 | 网络协议部分（传输层/WSMP/WSA） |  | 30d | 2014-10-10 | 2014-11-19 |  | 117d |  |  | 王磊 | 240h |
| 123 | 1.3.5.1.3 | VAM中间件部分 |  | 20d | 2014-10-10 | 2014-11-05 |  | 127d |  |  | 王磊 | 160h |
| 124 | 1.3.5.1.4 | 安全应用部分 |  | 20d | 2014-10-10 | 2014-11-05 |  | 127d |  |  | 葛学元 | 160h |
| 125 | 1.3.5.1.5 | 系统及其它功能部分 |  | 30d | 2014-10-10 | 2014-11-19 |  | 117d |  |  | 葛学元 | 240h |
| 126 | 1.3.5.1.6 | 应用功能完善（场景模式等） |  | 30d | 2015-03-02 | 2015-04-10 |  | -54d | 0d | start no earlier than 2015-03-02 | 葛学元 | 240h |
| 127 | 1.3.5.1.7 | 协议功能完善（加密、路侧消息等） |  | 30d | 2015-03-02 | 2015-04-10 |  | -55d | 0d | start no earlier than 2015-03-02 | 王磊 | 240h |
| 128 | 1.3.5.1.8 | Boot/QC/Debug功能实现 |  | 30d | 2015-03-02 | 2015-04-10 |  | -30d | 0d | start no earlier than 2015-03-02 | 王亮 | 240h |
| 129 | 1.3.5.1.9 | 系统联调及功能测试 |  | 14d | 2015-04-13 | 2015-04-30 | 126 | -54d | 0d | start no earlier than 2015-03-02 | 葛学元; 王亮 | 224h |
| 130 | 1.3.5.2 | **基本型车载终端（NL6621方案）** |  | 55d | 2015-04-13 | 2015-06-26 | 128 | -40d | 0d | start no earlier than 2015-03-02 | 王亮 | 480h |
| 131 | 1.3.5.2.1 | 系统移植 |  | 10d | 2015-04-13 | 2015-04-24 |  | -30d | 0d |  |  |  |
| 132 | 1.3.5.2.2 | 外设驱动移植（Gsensor、GPS...） |  | 10d | 2015-05-11 | 2015-05-22 | 131, 95 | -40d | 0d |  |  |  |
| 133 | 1.3.5.2.3 | MAC驱动部分 |  | 10d | 2015-05-25 | 2015-06-05 | 132 | -40d | 0d |  |  |  |
| 134 | 1.3.5.2.4 | 应用部分移植 |  | 5d | 2015-06-08 | 2015-06-12 | 133 | -40d | 0d |  | 葛学元 | 40h |
| 135 | 1.3.5.2.5 | 系统联调及功能测试 |  | 10d | 2015-06-15 | 2015-06-26 | 134 | -40d | 0d |  |  |  |

| ID | WBS | Task | Type | Duration | Start | Finish | Predecessors | Total slack | Free slack | Constraint | Resources | Work |
| --- | --- | --- | --- | --- | --- | --- | --- | --- | --- | --- | --- | --- |
| 136 | 1.3.5.3 | **V2V模块固件（RT3070）** |  | 65d | 2015-04-13 | 2015-07-10 | 127 | -55d | 0d | start no earlier than 2015-03-02 | 王磊 | 520h |
| 137 | 1.3.5.3.1 | 功能及接口协议定义（文档） |  | 20d | 2015-04-13 | 2015-05-08 |  | -55d | 0d |  |  |  |
| 138 | 1.3.5.3.2 | 系统移植 |  | 5d | 2015-05-11 | 2015-05-15 | 137 | -55d | 0d |  |  |  |
| 139 | 1.3.5.3.3 | 接口协议实现 |  | 10d | 2015-05-18 | 2015-05-29 | 138 | -55d | 0d |  |  |  |
| 140 | 1.3.5.3.4 | 系统联调 |  | 15d | 2015-06-22 | 2015-07-10 | 139, 143 | -55d | 0d |  |  |  |
| 141 | 1.3.5.4 | **增强型车载终端软件（应用CPU）** |  | 66d | 2015-05-01 | 2015-07-31 | 129 | -55d | 0d |  | 葛学元 | 648h |
| 142 | 1.3.5.4.1 | 系统创建 |  | 20d | 2015-05-01 | 2015-05-28 |  | -54d | 0d |  |  |  |
| 143 | 1.3.5.4.2 | SPI通信部分 |  | 15d | 2015-06-01 | 2015-06-19 | 139, 104FS+5d, 142 | -55d | 0d |  | 王磊 | 120h |
| 144 | 1.3.5.4.3 | 应用功能实现（安全、显示等） |  | 20d | 2015-05-29 | 2015-06-25 | 142 | -44d | 0d |  |  |  |
| 145 | 1.3.5.4.4 | 系统联调及功能测试 |  | 15d | 2015-07-13 | 2015-07-31 | 143, 144, 136 | -55d | 0d |  |  |  |
| 146 | 1.3.5.5 | **V2V模块固件（NL6621）** |  | 20d | 2015-07-13 | 2015-08-07 | 136, 130 | -50d | 0d |  | 王亮 | 160h |
| 147 | 1.3.5.5.1 | 移植调试 |  | 20d | 2015-07-13 | 2015-08-07 |  | -50d | 0d |  |  |  |
| 148 | 1.3.5.6 | **路侧原型终端软件** |  | 80d | 2015-07-01 | 2015-10-20 |  |  |  |  | 王磊 | 640h |
| 149 | 1.3.5.6.1 | 开发周期 |  | 80d | 2015-07-01 | 2015-10-20 |  | 0d |  |  |  |  |
| 150 | 1.3.5.6.2 | VAM移植 |  | 15d | 2015-07-01 | 2015-07-21 |  | 65d |  |  |  |  |
| 151 | 1.3.5.6.3 | 安全应用功能 |  | 15d | 2015-07-01 | 2015-07-21 |  | 65d |  |  |  |  |
| 152 | 1.3.5.6.4 | 网络后台通信功能 |  | 15d | 2015-07-01 | 2015-07-21 |  | 65d |  |  |  |  |
| 153 | 1.3.5.6.5 | 系统管理及其它功能部分 |  | 15d | 2015-07-01 | 2015-07-21 |  | 65d |  |  |  |  |
| 154 | 1.3.5.6.6 | 系统联调及功能测试 |  | 20d | 2015-07-01 | 2015-07-28 |  | 60d |  |  |  |  |
| 155 | 1.3.5.7 | **移动式路侧终端固件** | inactive | 10d | 2014-10-10 | 2014-10-22 |  | 157d |  |  |  |  |
| 156 | 1.3.5.7.1 | 系统及其它功能部分 | inactive | 10d | 2014-10-10 | 2014-10-22 |  | 157d |  |  |  |  |
| 157 | 1.3.6 | 基本型车载终端（RT3070方案）输出研发样机10套 | milestone | 0d | 2015-04-30 | 2015-04-30 | 80, 88, 129 | -1d | 0d | start no later than 2015-04-30 |  |  |
| 158 | 1.3.7 | 基本型车载终端（RT3070方案）输出小量产样机100套 | milestone | 0d | 2015-07-17 | 2015-07-17 | 83, 91, 129 | -25d | 0d |  |  |  |
| 159 | 1.3.8 | 基本型车载终端（NL6621方案）输出研发样机10套 | milestone | 0d | 2015-06-26 | 2015-06-26 | 88, 96, 135 | -20d | 0d | start no later than 2015-06-30 |  |  |
| 160 | 1.3.9 | 增强型车载终端（RT3070方案）输出研发样机10套 | milestone | 0d | 2015-07-31 | 2015-07-31 | 145, 109 | -44d | 0d | start no later than 2015-07-31 |  |  |
| 161 | 1.3.10 | 增强型车载终端（NL6621方案）输出研发样机10套 | milestone | 0d | 2015-08-07 | 2015-08-07 | 145, 146, 109 | -50d | 0d |  |  |  |

| ID | WBS | Task | Type | Duration | Start | Finish | Predecessors | Total slack | Free slack | Work | Text1 |
| --- | --- | --- | --- | --- | --- | --- | --- | --- | --- | --- | --- |
| 162 | 1.3.11 | **系统测试** |  | 131d | 2015-05-01 | 2015-10-30 | 120 | -100d | 0d |  |  |
| 163 | 1.3.11.1 | **基本型车载终端（RT3070方案）** |  | 20d | 2015-05-01 | 2015-05-28 | 157 | 11d |  |  |  |
| 164 | 1.3.11.1.1 | 外场路测（功能/性能，2~3辆车） |  | 10d | 2015-05-01 | 2015-05-14 |  | 11d | 0d |  |  |
| 165 | 1.3.11.1.2 | 外场路测（试用，5~10辆车） |  | 10d | 2015-05-15 | 2015-05-28 | 164 | 11d |  |  |  |
| 166 | 1.3.11.2 | **基本型车载终端（NL6621方案）** |  | 10d | 2015-06-29 | 2015-07-10 | 159 | -20d | 0d |  |  |
| 167 | 1.3.11.2.1 | 外场路测（功能/性能，2~3辆车） |  | 10d | 2015-06-29 | 2015-07-10 |  | -20d | 0d |  |  |
| 168 | 1.3.11.3 | **增强型车载终端（RT3070方案）** |  | 10d | 2015-07-31 | 2015-08-13 | 160 | -44d | 0d |  |  |
| 169 | 1.3.11.3.1 | 外场路测（功能/性能，2~3辆车） |  | 10d | 2015-07-31 | 2015-08-13 |  | -44d | 0d |  |  |
| 170 | 1.3.11.4 | **基本型车载终端（NL6621方案）** |  | 10d | 2015-08-10 | 2015-08-21 | 161 | -50d | 0d |  |  |
| 171 | 1.3.11.4.1 | 外场路测（功能/性能，2~3辆车） |  | 10d | 2015-08-10 | 2015-08-21 |  | -50d | 0d |  |  |
| 172 | 1.3.11.5 | **路侧终端** |  | 20d | 2015-10-05 | 2015-10-30 | 145, 116 | -100d | 0d |  |  |
| 173 | 1.3.11.5.1 | 外场路测（功能/性能，2~3辆车） |  | 20d | 2015-10-05 | 2015-10-30 |  | -100d | 0d |  |  |
| 174 | 1.4 | **生产制造** |  | 200d? | 2008-10-13 | 2009-07-17 |  | 1705d |  |  |  |
| 175 | 1.4.1 | **（TBD...）可靠性测试** |  | 0d? | 2008-10-13 | 2008-10-13 |  | 1905d | 0d |  |  |
| 176 | 1.4.1.1 | TBD | milestone | 0d? | 2008-10-13 | 2008-10-13 |  | 1905d |  |  |  |
| 177 | 1.4.2 | **（TBD...）生产制造** |  | 0d? | 2008-10-13 | 2008-10-13 | 175 | 1905d |  |  |  |
| 178 | 1.4.2.1 | 大批量（大于1K）生产制造 | milestone | 0d | 2008-10-13 | 2008-10-13 |  | 1905d |  |  |  |
| 179 | 1.4.2.2 | TBD | milestone | 0d? | 2008-10-13 | 2008-10-13 |  | 1905d |  |  |  |
| 180 | 1.4.3 | TBD |  | 200d? | 2008-10-13 | 2009-07-17 |  | 1705d |  |  |  |
| 181 | 1.4.4 | TBD |  | 200d? | 2008-10-13 | 2009-07-17 |  | 1705d |  |  |  |
| 182 | 1.5 | **（TBD...）集成化阶段** |  | 60d | 2015-06-15 | 2015-09-04 | 69 | -33d | 0d |  |  |
| 183 | 1.5.1 | TBD |  | 60d | 2015-06-15 | 2015-09-04 |  | -33d | 0d |  |  |
| 184 | 1.6 | **（TBD...）项目总结阶段** |  | 10d | 2015-07-20 | 2015-07-31 | 182 |  |  | 64h | 《项目研制总结报告》 |
| 185 | 1.6.1 | 项目总结与验收 |  | 8d | 2015-07-20 | 2015-07-29 |  | 2d |  | 64h |  |
